# Simple Project Plan

How a schedule from MS Project changed from version to version. A marks actual dates.

## Version 1 (saved 2017-09-13)

Note of the change: x

| ID | WBS | Task | Duration | Start | Finish | Predecessors | Complete | Total float | Constraint |
| --- | --- | --- | --- | --- | --- | --- | --- | --- | --- |
| 1 | 1 | **计划** | 4d | 2017-09-18 | 2017-09-21 |  | 74% |  |  |
| 2 |  | 架构搭建 | 10d | 2017-07-07 A | 2017-07-20 |  | 8% |  |  |
| 3 | 1.2 | **通用工具** | 4d | 2017-08-07 A | 2017-08-10 |  | 31% |  |  |
| 4 |  | 短信 | 4d | 2017-08-07 A | 2017-08-10 |  | 50% |  |  |
| 5 |  | 邮件 | 2d | 2017-08-11 A | 2017-08-14 |  | 50% |  |  |
| 6 |  | excel处理 | 2d | 2017-08-15 A | 2017-08-16 |  | 50% |  |  |
| 7 |  | 规则引擎 | 5d | 2017-09-25 | 2017-09-29 |  |  |  |  |
| 8 | 1.3 | **用户/员工/系统管理** | 37d | 2017-07-07 A | 2017-08-28 |  | 96% |  |  |
| 9 |  | 需求分析 | 2d | 2017-07-07 A | 2017-07-10 A |  | 100% |  |  |
| 10 |  | 方案设计 | 3d | 2017-07-13 A | 2017-07-17 A | 9 | 100% |  |  |
| 11 |  | 数据模型 | 4d | 2017-07-19 A | 2017-07-24 A | 9 | 100% |  |  |
| 12 |  | api文档编写 | 5d | 2017-09-11 A | 2017-09-15 |  | 75% |  |  |
| 13 | 1.3.5 | **功能开发** | 25d | 2017-07-25 A | 2017-08-28 |  | 100% |  |  |
| 14 |  | 登录服务 | 2d | 2017-07-25 A | 2017-07-26 A | 9, 10, 11, 24 | 100% |  |  |
| 15 |  | 系统域管理 | 2d | 2017-07-26 A | 2017-07-27 A | 9, 10, 11, 24 | 100% |  |  |
| 16 |  | 组织机构 | 3d | 2017-07-28 A | 2017-08-01 A | 9, 10, 11, 24 | 100% |  | finish no earlier than 2017-07-28 |
| 17 | 1.3.5.4 | **用户管理** | 4d | 2017-08-02 A | 2017-08-07 | 9, 10, 11, 24 | 100% |  |  |
| 18 |  | 批量导入 | 2d | 2017-08-08 A | 2017-08-09 A | 9, 10, 11, 24 | 100% |  |  |
| 19 |  | 功能(权限)管理 | 3d | 2017-08-14 A | 2017-08-16 A | 9, 10, 11, 24 | 100% |  |  |
| 20 |  | 角色管理 | 2d | 2017-08-07 A | 2017-08-08 A | 9, 10, 11, 24 | 100% |  |  |
| 21 |  | 菜单管理 | 2d | 2017-08-17 A | 2017-08-18 A | 9, 10, 11, 24 | 100% |  |  |
| 22 |  | 数据字典管理 | 2d | 2017-08-23 A | 2017-08-24 A | 9, 10, 11, 24 | 100% |  |  |
| 23 | 1.3.5.9 | **日志管理** | 3d | 2017-08-25 | 2017-08-29 A | 9, 10, 11 | 100% |  |  |
| 24 |  | 自定义日志注解 | 1d | 2017-08-21 A | 2017-08-21 A |  | 100% |  |  |
| 25 |  | 登录日志 | 1d | 2017-08-22 A | 2017-08-22 A | 9, 10, 11, 24 | 100% |  |  |
| 26 |  | 操作日志 | 1d | 2017-08-23 A | 2017-08-23 A | 9, 10, 11, 24 | 100% |  |  |
| 27 | 1.4 | **用户/会员** | 22d | 2017-09-04 | 2017-10-03 |  | 80% |  |  |
| 28 |  | 需求分析 | 2d | 2017-09-13 A | 2017-09-14 A |  | 100% |  |  |
| 29 |  | 方案设计 | 3d | 2017-09-13 A | 2017-09-15 A |  | 100% |  |  |
| 30 |  | 数据模型 | 4d | 2017-09-13 A | 2017-09-18 A |  | 100% |  |  |
| 31 |  | api文档编写 | 5d | 2017-09-18 | 2017-09-22 |  |  |  |  |
| 32 | 1.4.5 | **功能开发** | 14d | 2017-09-01 A | 2017-09-20 |  | 90% | 0d |  |
| 33 | 1.4.5.1 | **前台** | 6d | 2017-09-01 A | 2017-09-08 |  | 82% | 0d |  |
| 34 |  | 注册 | 1d | 2017-09-04 A | 2017-09-04 A |  | 100% |  |  |
| 35 |  | 登录/登出+日志 | 1d | 2017-09-01 A | 2017-09-01 A |  | 100% |  |  |
| 36 | 1.4.5.1.3 | **找回密码** | 1d | 2017-09-01 A | 2017-09-01 A |  | 100% |  |  |
| 37 |  | 密保手机找回 | 1d | 2017-09-01 A | 2017-09-01 A |  | 100% |  |  |
| 38 |  | 密保邮箱找回 | 1d | 2017-09-01 A | 2017-09-01 A |  | 100% |  |  |
| 39 | 1.4.5.1.4 | **个人设置** | 5d | 2017-09-04 A | 2017-09-08 |  | 71% | 0d |  |
| 40 |  | 实名认证 | 1d | 2017-09-07 A | 2017-09-07 A |  | 100% |  |  |
| 41 | 1.4.5.1.4.2 | **信息完善** | 1d | 2017-09-08 A | 2017-09-08 |  |  |  |  |
| 42 |  | 基本信息 | 1d | 2017-09-08 | 2017-09-08 |  |  |  |  |
| 43 |  | 模板扩展信息 | 1d | 2017-09-08 | 2017-09-08 |  |  |  |  |
| 44 |  | 登录密码-设置/修改 | 1d | 2017-09-04 A | 2017-09-04 A |  | 100% |  |  |
| 45 |  | 手机号码-绑定/修改 | 1d | 2017-09-06 A | 2017-09-06 A |  | 100% |  |  |
| 46 |  | 交易密码-设置/修改/找回 | 1d | 2017-09-06 A | 2017-09-06 A |  | 100% |  |  |
| 47 |  | 电子邮箱-绑定/修改 | 1d | 2017-09-07 A | 2017-09-07 A |  | 100% |  |  |
| 48 | 1.4.5.2 | **后台** | 13d | 2017-09-04 A | 2017-09-20 |  | 100% |  |  |
| 49 | 1.4.5.2.1 | **客户** | 3d | 2017-09-04 A | 2017-09-06 A |  | 100% |  |  |
| 50 | 1.4.5.2.1.1 | **实名认证** | 1d | 2017-09-04 A | 2017-09-04 A |  | 100% |  |  |
| 51 |  | 客户实名认证日志 | 1d | 2017-09-04 A | 2017-09-04 A |  | 100% |  |  |
| 52 |  | 会员信息 | 1d | 2017-09-04 A | 2017-09-04 A |  | 100% |  |  |
| 53 |  | 账户快照快照 | 1d | 2017-09-04 A | 2017-09-04 A |  | 100% |  |  |
| 54 |  | 标签设置 | 1d | 2017-09-04 A | 2017-09-04 A |  | 100% |  |  |
| 55 |  | 黑名单设置 | 1d | 2017-09-04 A | 2017-09-04 A |  | 100% |  |  |
| 56 |  | 登录日志 | 1d | 2017-09-04 A | 2017-09-04 A |  | 100% |  |  |
| 57 |  | 网签协议记录 | 1d | 2017-09-04 A | 2017-09-04 A |  | 100% |  |  |
| 58 |  | 业务类型 | 1d | 2017-09-04 A | 2017-09-04 A |  | 100% |  |  |
| 59 |  | 标签管理 | 1d | 2017-09-04 A | 2017-09-04 A |  | 100% |  |  |
| 60 | 1.4.5.2.4 | **档案模板管理** | 1d | 2017-09-04 A | 2017-09-04 A |  | 100% |  |  |
| 61 |  | 模板属性 | 1d | 2017-09-04 A | 2017-09-04 A |  | 100% |  |  |
| 62 | 1.5 | **用户/渠道商** | 26d | 2017-08-07 A | 2017-09-11 |  | 88% |  |  |
| 63 |  | 需求分析 | 2d | 2017-08-07 A | 2017-08-08 A |  | 100% |  |  |
| 64 |  | 方案设计 | 2d | 2017-08-09 A | 2017-08-10 A |  | 100% |  |  |
| 65 |  | 数据模型 | 2d | 2017-08-11 A | 2017-08-14 A |  | 100% |  |  |
| 66 |  | api文档编写 | 5d | 2017-09-11 A | 2017-09-15 |  | 60% |  |  |
| 67 | 1.5.5 | **功能开发** | 18d | 2017-08-15 | 2017-09-07 A |  | 100% |  |  |
| 68 | 1.5.5.1 | **前台** | 8d | 2017-08-15 A | 2017-08-24 A |  | 100% |  |  |
| 69 |  | 登录/登出 | 1d | 2017-08-15 A | 2017-08-15 A |  | 100% |  |  |
| 70 |  | 找回密码 | 1d | 2017-08-15 A | 2017-08-15 A |  | 100% |  |  |

| ID | WBS | Task | Duration | Start | Finish | Complete | Total float |
| --- | --- | --- | --- | --- | --- | --- | --- |
| 71 |  | 信息设置 | 1d | 2017-08-15 A | 2017-08-15 A | 100% |  |
| 72 | 1.5.5.2 | **后台** | 10d | 2017-08-14 A | 2017-08-25 A | 100% |  |
| 73 | 1.5.5.2.1 | **渠道商维护** | 3d | 2017-08-14 A | 2017-08-16 A | 100% |  |
| 74 |  | 批量导入 | 1d | 2017-08-15 A | 2017-08-15 A | 100% |  |
| 75 |  | 渠道商分类 | 2d | 2017-08-17 A | 2017-08-18 A | 100% |  |
| 76 | 2 | **账户/系统** | 5d | 2017-09-18 | 2017-09-22 |  |  |
| 77 |  | 需求分析 | 1.5d | 2017-09-18 | 2017-09-19 |  |  |
| 78 |  | 方案设计 | 1.5d | 2017-09-19 | 2017-09-20 |  |  |
| 79 |  | 数据模型 | 2d | 2017-09-21 | 2017-09-22 |  |  |
| 80 | 2.4 | **功能开发** | 1d | 2017-09-18 | 2017-09-18 |  | 0d |
| 81 | 2.4.1 | **前台** | 1d | 2017-09-18 | 2017-09-18 |  | 0d |
| 82 |  | <新任务> | 1d | 2017-09-18 | 2017-09-18 |  |  |
| 83 | 2.4.2 | **后台** | 1d | 2017-09-18 | 2017-09-18 |  | 0d |
| 84 |  | <新任务> | 1d | 2017-09-18 | 2017-09-18 |  |  |

## Version 2 (saved 2017-09-30)

Note of the change: 计划更新v.2

Last finish 2017-10-03 → 2017-10-13 (+10d).

Added:

| ID | Task | Duration | Start | Finish | Resources |
| --- | --- | --- | --- | --- | --- |
| 81 | **业务接口** | 1d? | 2017-09-13 | 2017-09-13 | 李林; 吴小刚 |
| 82 | **业务类** | 1d? | 2017-09-13 | 2017-09-13 | 李林; 吴小刚 |
| 83 | 开户 | 1d? | 2017-09-13 | 2017-09-13 | 李林; 吴小刚 |
| 84 | 设置密码 | 1d? | 2017-09-13 | 2017-09-13 | 李林; 吴小刚 |
| 85 | 修改密码 | 1d? | 2017-09-13 | 2017-09-13 | 李林; 吴小刚 |
| 86 | 实名认证 | 1d? | 2017-09-13 | 2017-09-13 | 李林; 吴小刚 |
| 87 | 鉴权认证 | 1d? | 2017-09-13 | 2017-09-13 | 李林; 吴小刚 |
| 88 | 授权扣款 | 1d? | 2017-09-13 | 2017-09-13 | 李林; 吴小刚 |
| 89 | 绑卡 | 1d? | 2017-09-13 | 2017-09-13 | 李林; 吴小刚 |
| 90 | 充值 | 1d? | 2017-09-13 | 2017-09-13 | 李林; 吴小刚 |
| 91 | 提现 | 1d? | 2017-09-13 | 2017-09-13 | 李林; 吴小刚 |
| 92 | 冻结 | 1d? | 2017-09-13 | 2017-09-13 | 李林; 吴小刚 |
| 93 | 解冻 | 1d? | 2017-09-13 | 2017-09-13 | 李林; 吴小刚 |
| 94 | 投资 | 1d? | 2017-09-13 | 2017-09-13 | 李林; 吴小刚 |
| 95 | 还款 | 1d? | 2017-09-13 | 2017-09-13 | 李林; 吴小刚 |
| 96 | 退款 | 1d? | 2017-09-13 | 2017-09-13 | 李林; 吴小刚 |
| 97 | 代收 | 1d? | 2017-09-13 | 2017-09-13 | 李林; 吴小刚 |
| 98 | 代付 | 1d? | 2017-09-13 | 2017-09-13 | 李林; 吴小刚 |
| 99 | **查询类** | 1d? | 2017-09-13 | 2017-09-13 | 李林; 吴小刚 |
| 100 | 资金明细查询 | 1d? | 2017-09-13 | 2017-09-13 | 李林; 吴小刚 |
| 101 | 交易查询 | 1d? | 2017-09-13 | 2017-09-13 | 李林; 吴小刚 |
| 102 | 充值查询 | 1d? | 2017-09-13 | 2017-09-13 | 李林; 吴小刚 |
| 103 | 提现查询 | 1d? | 2017-09-13 | 2017-09-13 | 李林; 吴小刚 |
| 104 | 退款查询 | 1d? | 2017-09-13 | 2017-09-13 | 李林; 吴小刚 |
| 105 | 代收查询 | 1d? | 2017-09-13 | 2017-09-13 | 李林; 吴小刚 |
| 106 | 代付查询 | 1d? | 2017-09-13 | 2017-09-13 | 李林; 吴小刚 |
| 107 | 结果查询 | 1d? | 2017-09-13 | 2017-09-13 | 李林; 吴小刚 |
| 108 | 余额查询 | 1d? | 2017-09-13 | 2017-09-13 | 李林; 吴小刚 |
| 109 | 会员查询 | 1d? | 2017-09-13 | 2017-09-13 | 李林; 吴小刚 |
| 110 | 认证信息查询 | 1d? | 2017-09-13 | 2017-09-13 | 李林; 吴小刚 |
| 111 | 银行卡查询 | 1d? | 2017-09-13 | 2017-09-13 | 李林; 吴小刚 |
| 112 | **账户类** | 1d? | 2017-09-13 | 2017-09-13 | 李林; 吴小刚 |
| 113 | 个人账户 | 1d? | 2017-09-13 | 2017-09-13 | 李林; 吴小刚 |
| 114 | 企业账户 | 1d? | 2017-09-13 | 2017-09-13 | 李林; 吴小刚 |
| 115 | 借款人账户 | 1d? | 2017-09-13 | 2017-09-13 | 李林; 吴小刚 |
| 116 | 投资人账户 | 1d? | 2017-09-13 | 2017-09-13 | 李林; 吴小刚 |
| 117 | 平台账户 | 1d? | 2017-09-13 | 2017-09-13 | 李林; 吴小刚 |
| 118 | 担保方账户 | 1d? | 2017-09-13 | 2017-09-13 | 李林; 吴小刚 |
| 119 | 保证金账户 | 1d? | 2017-09-13 | 2017-09-13 | 李林; 吴小刚 |
| 120 | 冻结账户 | 1d? | 2017-09-13 | 2017-09-13 | 李林; 吴小刚 |
| 121 | 内部中间收款账户 | 1d? | 2017-09-13 | 2017-09-13 | 李林; 吴小刚 |
| 122 | 内部中间还款账户 | 1d? | 2017-09-13 | 2017-09-13 | 李林; 吴小刚 |
| 123 | **会员类** | 1d? | 2017-09-13 | 2017-09-13 | 李林; 吴小刚 |
| 124 | 创建激活会员接口 | 1d? | 2017-09-13 | 2017-09-13 | 李林; 吴小刚 |
| 125 | 设置实名信息接口 | 1d? | 2017-09-13 | 2017-09-13 | 李林; 吴小刚 |
| 126 | 绑定认证信息接口 | 1d? | 2017-09-13 | 2017-09-13 | 李林; 吴小刚 |
| 127 | 解绑认证信息接口 | 1d? | 2017-09-13 | 2017-09-13 | 李林; 吴小刚 |
| 128 | 查询认证信息接口 | 1d? | 2017-09-13 | 2017-09-13 | 李林; 吴小刚 |
| 129 | 绑定银行卡接口 | 1d? | 2017-09-13 | 2017-09-13 | 李林; 吴小刚 |
| 130 | 解绑银行卡接口 | 1d? | 2017-09-13 | 2017-09-13 | 李林; 吴小刚 |
| 131 | 查询银行卡接口 | 1d? | 2017-09-13 | 2017-09-13 | 李林; 吴小刚 |
| 132 | 查询余额接口 | 1d? | 2017-09-13 | 2017-09-13 | 李林; 吴小刚 |
| 133 | 查询收支明细接口 | 1d? | 2017-09-13 | 2017-09-13 | 李林; 吴小刚 |
| 134 | 冻结余额接口 | 1d? | 2017-09-13 | 2017-09-13 | 李林; 吴小刚 |
| 135 | 解冻余额接口 | 1d? | 2017-09-13 | 2017-09-13 | 李林; 吴小刚 |
| 136 | **增值类** | 1d? | 2017-09-13 | 2017-09-13 | 李林; 吴小刚 |
| 137 | 货币基金账户 | 1d? | 2017-09-13 | 2017-09-13 | 李林; 吴小刚 |
| 138 | 货币基金选择 | 1d? | 2017-09-13 | 2017-09-13 | 李林; 吴小刚 |
| 139 | 自动转入 | 1d? | 2017-09-13 | 2017-09-13 | 李林; 吴小刚 |
| 140 | 自动赎回到账户 | 1d? | 2017-09-13 | 2017-09-13 | 李林; 吴小刚 |
| 141 | 自动赎回到卡 | 1d? | 2017-09-13 | 2017-09-13 | 李林; 吴小刚 |
| 142 | 自动赎回份额投资 | 1d? | 2017-09-13 | 2017-09-13 | 李林; 吴小刚 |
| 143 | 收益自动转入继续财富增值 | 1d? | 2017-09-13 | 2017-09-13 | 李林; 吴小刚 |
| 144 | **交易类** | 1d? | 2017-09-13 | 2017-09-13 | 李林; 吴小刚 |
| 145 | **订单处理结果类** | 1d? | 2017-09-13 | 2017-09-13 | 李林; 吴小刚 |
| 146 | 交易结果通知接口 | 1d? | 2017-09-13 | 2017-09-13 | 李林; 吴小刚 |
| 147 | 退款结果通知接口 | 1d? | 2017-09-13 | 2017-09-13 | 李林; 吴小刚 |
| 148 | 充值结果通知接口 | 1d? | 2017-09-13 | 2017-09-13 | 李林; 吴小刚 |
| 149 | 提现结果通知接口 | 1d? | 2017-09-13 | 2017-09-13 | 李林; 吴小刚 |
| 150 | 企业会员审核结果通知接口 | 1d? | 2017-09-13 | 2017-09-13 | 李林; 吴小刚 |
| 151 | 创建托管代收交易接口 | 1d? | 2017-09-13 | 2017-09-13 | 李林; 吴小刚 |
| 152 | 创建单笔托管代付交易接口 | 1d? | 2017-09-13 | 2017-09-13 | 李林; 吴小刚 |
| 153 | 创建批量托管代付交易接口 | 1d? | 2017-09-13 | 2017-09-13 | 李林; 吴小刚 |
| 154 | 托管交易支付接口 | 1d? | 2017-09-13 | 2017-09-13 | 李林; 吴小刚 |
| 155 | 支付结果查询接口 | 1d? | 2017-09-13 | 2017-09-13 | 李林; 吴小刚 |
| 156 | 托管交易查询接口 | 1d? | 2017-09-13 | 2017-09-13 | 李林; 吴小刚 |
| 157 | 托管交易批次查询接口 | 1d? | 2017-09-13 | 2017-09-13 | 李林; 吴小刚 |
| 158 | 托管退款接口 | 1d? | 2017-09-13 | 2017-09-13 | 李林; 吴小刚 |
| 159 | 托管退款查询接口 | 1d? | 2017-09-13 | 2017-09-13 | 李林; 吴小刚 |
| 160 | 托管充值接口 | 1d? | 2017-09-13 | 2017-09-13 | 李林; 吴小刚 |
| 161 | 托管充值查询接口 | 1d? | 2017-09-13 | 2017-09-13 | 李林; 吴小刚 |
| 162 | 托管提现接口 | 1d? | 2017-09-13 | 2017-09-13 | 李林; 吴小刚 |
| 163 | 托管提现查询接口 | 1d? | 2017-09-13 | 2017-09-13 | 李林; 吴小刚 |
| 164 | 转账接口 | 1d? | 2017-09-13 | 2017-09-13 | 李林; 吴小刚 |
| 165 | 支付推进接口 | 1d? | 2017-09-13 | 2017-09-13 | 李林; 吴小刚 |
| 168 | **个人主页** | 1d? | 2017-09-13 | 2017-09-13 | 李林; 吴小刚 |
| 169 | 余额 | 1d? | 2017-09-13 | 2017-09-13 | 李林; 吴小刚 |
| 170 | 我的投资 | 1d? | 2017-09-13 | 2017-09-13 | 李林; 吴小刚 |
| 171 | 我的借款 | 1d? | 2017-09-13 | 2017-09-13 | 李林; 吴小刚 |
| 173 | 个人信息、工作信息、银行卡绑定、密码进行设置与修改 | 1d? | 2017-09-13 | 2017-09-13 | 李林; 吴小刚 |
| 174 | **信息认证** | 1d? | 2017-09-13 | 2017-09-13 | 李林; 吴小刚 |
| 175 | 实名认证(ID5) | 1d? | 2017-09-13 | 2017-09-13 | 李林; 吴小刚 |
| 176 | 学历认证 | 1d? | 2017-09-13 | 2017-09-13 | 李林; 吴小刚 |
| 177 | 手机认证 | 1d? | 2017-09-13 | 2017-09-13 | 李林; 吴小刚 |
| 178 | 视频认证 | 1d? | 2017-09-13 | 2017-09-13 | 李林; 吴小刚 |
| 179 | 信用认证 | 1d? | 2017-09-13 | 2017-09-13 | 李林; 吴小刚 |
| 180 | **借款管理** | 1d? | 2017-09-13 | 2017-09-13 | 李林; 吴小刚 |
| 181 | 发起借款 | 1d? | 2017-09-13 | 2017-09-13 | 李林; 吴小刚 |
| 182 | 还款管理 | 1d? | 2017-09-13 | 2017-09-13 | 李林; 吴小刚 |
| 183 | 已发布的借款 | 1d? | 2017-09-13 | 2017-09-13 | 李林; 吴小刚 |
| 184 | 贷款统计 | 1d? | 2017-09-13 | 2017-09-13 | 李林; 吴小刚 |
| 185 | **理财管理** | 1d? | 2017-09-13 | 2017-09-13 | 李林; 吴小刚 |
| 186 | 我的投标 | 1d? | 2017-09-13 | 2017-09-13 | 李林; 吴小刚 |
| 187 | 我关注的项目 | 1d? | 2017-09-13 | 2017-09-13 | 李林; 吴小刚 |
| 188 | 理财统计 | 1d? | 2017-09-13 | 2017-09-13 | 李林; 吴小刚 |
| 189 | 自动投标 | 1d? | 2017-09-13 | 2017-09-13 | 李林; 吴小刚 |
| 190 | **债权转让** | 1d? | 2017-09-13 | 2017-09-13 | 李林; 吴小刚 |
| 191 | 债权转让 | 1d? | 2017-09-13 | 2017-09-13 | 李林; 吴小刚 |
| 192 | 债权竞拍 | 1d? | 2017-09-13 | 2017-09-13 | 李林; 吴小刚 |
| 194 | **审核管理** | 1d? | 2017-09-13 | 2017-09-13 | 李林; 吴小刚 |
| 195 | 额度申请管理 | 1d? | 2017-09-13 | 2017-09-13 | 李林; 吴小刚 |
| 196 | 债权管理 | 1d? | 2017-09-13 | 2017-09-13 | 李林; 吴小刚 |
| 197 | 正在转让的债权 | 1d? | 2017-09-13 | 2017-09-13 | 李林; 吴小刚 |
| 198 | 成功转让的债权 | 1d? | 2017-09-13 | 2017-09-13 | 李林; 吴小刚 |
| 199 | 申请正在转让的债权 | 1d? | 2017-09-13 | 2017-09-13 | 李林; 吴小刚 |
| 200 | 失败的债权 | 1d? | 2017-09-13 | 2017-09-13 | 李林; 吴小刚 |
| 201 | **财务管理** | 1d? | 2017-09-13 | 2017-09-13 | 李林; 吴小刚 |
| 202 | 充值提现审核 | 1d? | 2017-09-13 | 2017-09-13 | 李林; 吴小刚 |
| 203 | 银行卡管理 | 1d? | 2017-09-13 | 2017-09-13 | 李林; 吴小刚 |
| 204 | 用户资金管理 | 1d? | 2017-09-13 | 2017-09-13 | 李林; 吴小刚 |
| 205 | 充值管理 | 1d? | 2017-09-13 | 2017-09-13 | 李林; 吴小刚 |
| 206 | 充值记录 | 1d? | 2017-09-13 | 2017-09-13 | 李林; 吴小刚 |
| 207 | 风险保障金 | 1d? | 2017-09-13 | 2017-09-13 | 李林; 吴小刚 |
| 208 | **审核管理** | 1d? | 2017-09-13 | 2017-09-13 | 李林; 吴小刚 |
| 209 | 额度申请管理 | 1d? | 2017-09-13 | 2017-09-13 | 李林; 吴小刚 |
| 210 | 基本信息审核 | 1d? | 2017-09-13 | 2017-09-13 | 李林; 吴小刚 |
| 211 | 新用户认证资料 | 1d? | 2017-09-13 | 2017-09-13 | 李林; 吴小刚 |
| 212 | 基本信用资料认证 | 1d? | 2017-09-13 | 2017-09-13 | 李林; 吴小刚 |
| 213 | 可选资料认证 | 1d? | 2017-09-13 | 2017-09-13 | 李林; 吴小刚 |
| 214 | 认证资料统计 | 1d? | 2017-09-13 | 2017-09-13 | 李林; 吴小刚 |
| 215 | 手机号码更改 | 1d? | 2017-09-13 | 2017-09-13 | 李林; 吴小刚 |
| 216 | **借款管理** | 1d? | 2017-09-13 | 2017-09-13 | 李林; 吴小刚 |
| 217 | 初审中的借款 | 1d? | 2017-09-13 | 2017-09-13 | 李林; 吴小刚 |
| 218 | 招标中的借款 | 1d? | 2017-09-13 | 2017-09-13 | 李林; 吴小刚 |
| 219 | 满标审核 | 1d? | 2017-09-13 | 2017-09-13 | 李林; 吴小刚 |
| 220 | 流标的借款 | 1d? | 2017-09-13 | 2017-09-13 | 李林; 吴小刚 |
| 221 | 所有的借款 | 1d? | 2017-09-13 | 2017-09-13 | 李林; 吴小刚 |
| 222 | **贷后管理** | 1d? | 2017-09-13 | 2017-09-13 | 李林; 吴小刚 |
| 223 | 待收款 | 1d? | 2017-09-13 | 2017-09-13 | 李林; 吴小刚 |
| 224 | 逾期的还款 | 1d? | 2017-09-13 | 2017-09-13 | 李林; 吴小刚 |
| 225 | 逾期垫付 | 1d? | 2017-09-13 | 2017-09-13 | 李林; 吴小刚 |
| 226 | 最近3天的还款 | 1d? | 2017-09-13 | 2017-09-13 | 李林; 吴小刚 |
| 227 | 已还款 | 1d? | 2017-09-13 | 2017-09-13 | 李林; 吴小刚 |

Changed:

| ID | Task | Start | Finish | Duration | Total float | Other |
| --- | --- | --- | --- | --- | --- | --- |
| 76 | **账户/系统** | 2017-09-18 → 2017-09-13 (-5d) | 2017-09-22 → 2017-10-13 (+21d) | 5d → 23d? | none → 0d |  |
| 77 | 需求分析 | 2017-09-18 → 2017-09-13 (-5d) | 2017-09-19 → 2017-09-20 (+1d) | 1.5d → 6d | none → 17d |  |
| 78 | 方案设计 | 2017-09-19 → 2017-09-25 (+6d) | 2017-09-20 → 2017-09-29 (+9d) | 1.5d → 5d | none → 10d | constraint none → start no earlier than 2017-09-25 |
| 79 | 数据模型 | 2017-09-21 → 2017-10-09 (+18d) | 2017-09-22 → 2017-10-13 (+21d) | 2d → 5d | none → 0d | constraint none → start no earlier than 2017-10-09 |
| 80 | **功能开发** | 2017-09-18 → 2017-09-13 (-5d) | 2017-09-18 → 2017-09-21 (+3d) | 1d → 7d? | 0d → none |  |
| 166 | **前台** | 2017-09-18 → 2017-09-13 (-5d) |  | 1d → 4d? | 0d → none |  |
| 167 | **我的账户** | 2017-09-18 → 2017-09-13 (-5d) | 2017-09-18 → 2017-09-13 (-5d) | 1d → 1d? |  | was named <新任务> |
| 172 | **个人设置** | 2017-09-18 → 2017-09-13 (-5d) | 2017-09-18 → 2017-09-13 (-5d) | 1d → 1d? |  | was named <新任务> |
| 193 | **后台** | 2017-09-18 → 2017-09-13 (-5d) | 2017-09-18 → 2017-09-13 (-5d) | 1d → 1d? | 0d → none |  |

## Version 3 (saved 2017-09-30)

Note of the change: 计划更新v.2

Last finish stays 2017-10-13.

Added:

| ID | Task | Duration | Start | Finish |
| --- | --- | --- | --- | --- |
| 151 | **第三方托管系统对接** | 1d? | 2017-09-13 | 2017-09-13 |

## Version 4 (saved 2017-09-30)

Note of the change: 计划更新v.2

Last finish 2017-10-13 → 2018-01-02 (+81d).

Changed:

| ID | Task | Start | Finish | Duration | Total float | Other |
| --- | --- | --- | --- | --- | --- | --- |
| 76 | **账户/系统** |  | 2017-10-13 → 2018-01-02 (+81d) | 23d? → 80d |  |  |
| 80 | **功能开发** | 2017-09-13 → 2017-10-13 (+30d) | 2017-09-21 → 2018-01-02 (+103d) | 7d? → 58d |  |  |
| 81 | **业务接口** | 2017-09-13 → 2017-10-13 (+30d) | 2017-09-13 → 2017-11-24 (+72d) | 1d? → 31d |  |  |
| 82 | **业务类** | 2017-09-13 → 2017-10-13 (+30d) | 2017-09-13 → 2017-11-07 (+55d) | 1d? → 18d |  |  |
| 83 | 开户 | 2017-09-13 → 2017-10-10 (+27d) | 2017-09-13 → 2017-10-10 (+27d) | 1d? → 1d | none → 33d | constraint none → start no earlier than 2017-10-10 |
| 84 | 设置密码 | 2017-09-13 → 2017-10-11 (+28d) | 2017-09-13 → 2017-10-11 (+28d) |  | none → 32d | constraint none → start no earlier than 2017-10-11 |
| 85 | 修改密码 |  |  |  | none → 52d | constraint none → start no earlier than 2017-09-13 |
| 86 | 实名认证 | 2017-09-13 → 2017-10-13 (+30d) | 2017-09-13 → 2017-10-13 (+30d) |  | none → 17d |  |
| 87 | 鉴权认证 | 2017-09-13 → 2017-10-13 (+30d) | 2017-09-13 → 2017-10-13 (+30d) |  | none → 17d |  |
| 88 | 授权扣款 |  |  |  | none → 52d | constraint none → start no earlier than 2017-09-13 |
| 89 | 绑卡 | 2017-09-13 → 2017-09-14 (+1d) | 2017-09-13 → 2017-09-14 (+1d) |  | none → 51d | constraint none → start no earlier than 2017-09-14 |
| 90 | 充值 | 2017-09-13 → 2017-09-15 (+2d) | 2017-09-13 → 2017-09-19 (+6d) | 1d? → 3d | none → 48d | constraint none → start no earlier than 2017-09-15 |
| 91 | 提现 | 2017-09-13 → 2017-09-20 (+7d) | 2017-09-13 → 2017-09-21 (+8d) | 1d? → 2d | none → 46d | constraint none → start no earlier than 2017-09-20 |
| 92 | 冻结 | 2017-09-13 → 2017-09-22 (+9d) | 2017-09-13 → 2017-09-22 (+9d) | 1d? → 1d | none → 45d | constraint none → start no earlier than 2017-09-22 |
| 93 | 解冻 | 2017-09-13 → 2017-09-25 (+12d) | 2017-09-13 → 2017-09-25 (+12d) |  | none → 33d | constraint none → start no earlier than 2017-09-25 |
| 94 | 投资 | 2017-09-13 → 2017-09-26 (+13d) | 2017-09-13 → 2017-09-26 (+13d) |  | none → 32d | constraint none → start no earlier than 2017-09-26 |
| 95 | 还款 | 2017-09-13 → 2017-09-27 (+14d) | 2017-09-13 → 2017-09-27 (+14d) |  | none → 31d | constraint none → start no earlier than 2017-09-27 |
| 96 | 退款 | 2017-09-13 → 2017-09-28 (+15d) | 2017-09-13 → 2017-09-28 (+15d) |  | none → 30d | constraint none → start no earlier than 2017-09-28 |
| 97 | 代收 | 2017-09-13 → 2017-09-29 (+16d) | 2017-09-13 → 2017-09-29 (+16d) |  | none → 29d | constraint none → start no earlier than 2017-09-29 |
| 98 | 代付 | 2017-09-13 → 2017-10-13 (+30d) | 2017-09-13 → 2017-10-13 (+30d) |  | none → 19d |  |
| 99 | **查询类** | 2017-09-13 → 2017-10-13 (+30d) | 2017-09-13 → 2017-10-13 (+30d) |  | none → 30d |  |
| 100 | 资金明细查询 | 2017-09-13 → 2017-10-13 (+30d) | 2017-09-13 → 2017-10-13 (+30d) |  | none → 19d |  |
| 101 | 交易查询 | 2017-09-13 → 2017-10-13 (+30d) | 2017-09-13 → 2017-10-13 (+30d) |  | none → 19d |  |
| 102 | 充值查询 | 2017-09-13 → 2017-10-13 (+30d) | 2017-09-13 → 2017-10-13 (+30d) |  | none → 19d |  |
| 103 | 提现查询 | 2017-09-13 → 2017-10-13 (+30d) | 2017-09-13 → 2017-10-13 (+30d) |  | none → 19d |  |
| 104 | 退款查询 | 2017-09-13 → 2017-10-13 (+30d) | 2017-09-13 → 2017-10-13 (+30d) |  | none → 19d |  |
| 105 | 代收查询 | 2017-09-13 → 2017-10-13 (+30d) | 2017-09-13 → 2017-10-13 (+30d) |  | none → 19d |  |
| 106 | 代付查询 | 2017-09-13 → 2017-10-13 (+30d) | 2017-09-13 → 2017-10-13 (+30d) |  | none → 19d |  |
| 107 | 结果查询 | 2017-09-13 → 2017-10-13 (+30d) | 2017-09-13 → 2017-10-13 (+30d) |  | none → 19d |  |
| 108 | 余额查询 | 2017-09-13 → 2017-10-13 (+30d) | 2017-09-13 → 2017-10-13 (+30d) |  | none → 19d |  |
| 109 | 会员查询 | 2017-09-13 → 2017-10-13 (+30d) | 2017-09-13 → 2017-10-13 (+30d) |  | none → 19d |  |
| 110 | 认证信息查询 | 2017-09-13 → 2017-10-13 (+30d) | 2017-09-13 → 2017-10-13 (+30d) |  | none → 19d |  |
| 111 | 银行卡查询 | 2017-09-13 → 2017-10-13 (+30d) | 2017-09-13 → 2017-10-13 (+30d) |  | none → 19d |  |
| 112 | **账户类** | 2017-09-13 → 2017-10-13 (+30d) | 2017-09-13 → 2017-10-13 (+30d) |  | none → 30d |  |
| 113 | 个人账户 | 2017-09-13 → 2017-10-13 (+30d) | 2017-09-13 → 2017-10-13 (+30d) |  | none → 19d |  |
| 114 | 企业账户 | 2017-09-13 → 2017-10-13 (+30d) | 2017-09-13 → 2017-10-13 (+30d) |  | none → 19d |  |
| 115 | 借款人账户 | 2017-09-13 → 2017-10-13 (+30d) | 2017-09-13 → 2017-10-13 (+30d) |  | none → 19d |  |
| 116 | 投资人账户 | 2017-09-13 → 2017-10-13 (+30d) | 2017-09-13 → 2017-10-13 (+30d) |  | none → 19d |  |
| 117 | 平台账户 | 2017-09-13 → 2017-10-13 (+30d) | 2017-09-13 → 2017-10-13 (+30d) |  | none → 19d |  |
| 118 | 担保方账户 | 2017-09-13 → 2017-10-13 (+30d) | 2017-09-13 → 2017-10-13 (+30d) |  | none → 19d |  |
| 119 | 保证金账户 | 2017-09-13 → 2017-10-13 (+30d) | 2017-09-13 → 2017-10-13 (+30d) |  | none → 19d |  |
| 120 | 冻结账户 | 2017-09-13 → 2017-10-13 (+30d) | 2017-09-13 → 2017-10-13 (+30d) |  | none → 19d |  |
| 121 | 内部中间收款账户 | 2017-09-13 → 2017-10-13 (+30d) | 2017-09-13 → 2017-10-13 (+30d) |  | none → 19d |  |
| 122 | 内部中间还款账户 | 2017-09-13 → 2017-10-13 (+30d) | 2017-09-13 → 2017-10-13 (+30d) |  | none → 19d |  |
| 123 | **会员类** | 2017-09-13 → 2017-10-13 (+30d) | 2017-09-13 → 2017-10-13 (+30d) |  | none → 30d |  |
| 124 | 创建激活会员接口 | 2017-09-13 → 2017-10-13 (+30d) | 2017-09-13 → 2017-10-13 (+30d) |  | none → 19d |  |
| 125 | 设置实名信息接口 | 2017-09-13 → 2017-10-13 (+30d) | 2017-09-13 → 2017-10-13 (+30d) |  | none → 19d |  |
| 126 | 绑定认证信息接口 | 2017-09-13 → 2017-10-13 (+30d) | 2017-09-13 → 2017-10-13 (+30d) |  | none → 19d |  |
| 127 | 解绑认证信息接口 | 2017-09-13 → 2017-10-13 (+30d) | 2017-09-13 → 2017-10-13 (+30d) |  | none → 19d |  |
| 128 | 查询认证信息接口 | 2017-09-13 → 2017-10-13 (+30d) | 2017-09-13 → 2017-10-13 (+30d) |  | none → 19d |  |
| 129 | 绑定银行卡接口 | 2017-09-13 → 2017-10-13 (+30d) | 2017-09-13 → 2017-10-13 (+30d) |  | none → 19d |  |
| 130 | 解绑银行卡接口 | 2017-09-13 → 2017-10-13 (+30d) | 2017-09-13 → 2017-10-13 (+30d) |  | none → 19d |  |
| 131 | 查询银行卡接口 | 2017-09-13 → 2017-10-13 (+30d) | 2017-09-13 → 2017-10-13 (+30d) |  | none → 19d |  |
| 132 | 查询余额接口 | 2017-09-13 → 2017-10-13 (+30d) | 2017-09-13 → 2017-10-13 (+30d) |  | none → 19d |  |
| 133 | 查询收支明细接口 | 2017-09-13 → 2017-10-13 (+30d) | 2017-09-13 → 2017-10-13 (+30d) |  | none → 19d |  |
| 134 | 冻结余额接口 | 2017-09-13 → 2017-10-13 (+30d) | 2017-09-13 → 2017-10-13 (+30d) |  | none → 19d |  |
| 135 | 解冻余额接口 | 2017-09-13 → 2017-10-13 (+30d) | 2017-09-13 → 2017-10-13 (+30d) |  | none → 19d |  |
| 136 | **增值类** | 2017-09-13 → 2017-10-13 (+30d) | 2017-09-13 → 2017-10-13 (+30d) |  | none → 30d |  |
| 137 | 货币基金账户 | 2017-09-13 → 2017-10-13 (+30d) | 2017-09-13 → 2017-10-13 (+30d) |  | none → 19d |  |
| 138 | 货币基金选择 | 2017-09-13 → 2017-10-13 (+30d) | 2017-09-13 → 2017-10-13 (+30d) |  | none → 19d |  |
| 139 | 自动转入 | 2017-09-13 → 2017-10-13 (+30d) | 2017-09-13 → 2017-10-13 (+30d) |  | none → 19d |  |
| 140 | 自动赎回到账户 | 2017-09-13 → 2017-10-13 (+30d) | 2017-09-13 → 2017-10-13 (+30d) |  | none → 19d |  |
| 141 | 自动赎回到卡 | 2017-09-13 → 2017-10-13 (+30d) | 2017-09-13 → 2017-10-13 (+30d) |  | none → 19d |  |
| 142 | 自动赎回份额投资 | 2017-09-13 → 2017-10-13 (+30d) | 2017-09-13 → 2017-10-13 (+30d) |  | none → 19d |  |
| 143 | 收益自动转入继续财富增值 | 2017-09-13 → 2017-10-13 (+30d) | 2017-09-13 → 2017-10-13 (+30d) |  | none → 19d |  |
| 144 | **交易类** | 2017-09-13 → 2017-10-13 (+30d) | 2017-09-13 → 2017-10-13 (+30d) |  | none → 30d |  |
| 145 | **订单处理结果类** | 2017-09-13 → 2017-10-13 (+30d) | 2017-09-13 → 2017-10-13 (+30d) |  | none → 30d |  |
| 146 | 交易结果通知接口 | 2017-09-13 → 2017-10-13 (+30d) | 2017-09-13 → 2017-10-13 (+30d) |  | none → 19d |  |
| 147 | 退款结果通知接口 | 2017-09-13 → 2017-10-13 (+30d) | 2017-09-13 → 2017-10-13 (+30d) |  | none → 19d |  |
| 148 | 充值结果通知接口 | 2017-09-13 → 2017-10-13 (+30d) | 2017-09-13 → 2017-10-13 (+30d) |  | none → 19d |  |

| ID | Task | Start | Finish | Duration | Total float |
| --- | --- | --- | --- | --- | --- |
| 149 | 提现结果通知接口 | 2017-09-13 → 2017-10-13 (+30d) | 2017-09-13 → 2017-10-13 (+30d) |  | none → 19d |
| 150 | 企业会员审核结果通知接口 | 2017-09-13 → 2017-10-13 (+30d) | 2017-09-13 → 2017-10-13 (+30d) |  | none → 19d |
| 151 | **第三方托管系统对接** | 2017-09-13 → 2017-10-13 (+30d) | 2017-09-13 → 2017-10-13 (+30d) |  | 0d → 30d |
| 152 | 创建托管代收交易接口 | 2017-09-13 → 2017-10-13 (+30d) | 2017-09-13 → 2017-10-13 (+30d) |  | none → 19d |
| 153 | 创建单笔托管代付交易接口 | 2017-09-13 → 2017-10-13 (+30d) | 2017-09-13 → 2017-10-13 (+30d) |  | none → 19d |
| 154 | 创建批量托管代付交易接口 | 2017-09-13 → 2017-10-13 (+30d) | 2017-09-13 → 2017-10-13 (+30d) |  | none → 19d |
| 155 | 托管交易支付接口 | 2017-09-13 → 2017-10-13 (+30d) | 2017-09-13 → 2017-10-13 (+30d) |  | none → 19d |
| 156 | 支付结果查询接口 | 2017-09-13 → 2017-10-13 (+30d) | 2017-09-13 → 2017-10-13 (+30d) |  | none → 19d |
| 157 | 托管交易查询接口 | 2017-09-13 → 2017-10-13 (+30d) | 2017-09-13 → 2017-10-13 (+30d) |  | none → 19d |
| 158 | 托管交易批次查询接口 | 2017-09-13 → 2017-10-13 (+30d) | 2017-09-13 → 2017-10-13 (+30d) |  | none → 19d |
| 159 | 托管退款接口 | 2017-09-13 → 2017-10-13 (+30d) | 2017-09-13 → 2017-10-13 (+30d) |  | none → 19d |
| 160 | 托管退款查询接口 | 2017-09-13 → 2017-10-13 (+30d) | 2017-09-13 → 2017-10-13 (+30d) |  | none → 19d |
| 161 | 托管充值接口 | 2017-09-13 → 2017-10-13 (+30d) | 2017-09-13 → 2017-10-13 (+30d) |  | none → 19d |
| 162 | 托管充值查询接口 | 2017-09-13 → 2017-10-13 (+30d) | 2017-09-13 → 2017-10-13 (+30d) |  | none → 19d |
| 163 | 托管提现接口 | 2017-09-13 → 2017-10-13 (+30d) | 2017-09-13 → 2017-10-13 (+30d) |  | none → 19d |
| 164 | 托管提现查询接口 | 2017-09-13 → 2017-10-13 (+30d) | 2017-09-13 → 2017-10-13 (+30d) |  | none → 19d |
| 165 | 转账接口 | 2017-09-13 → 2017-10-13 (+30d) | 2017-09-13 → 2017-10-13 (+30d) |  | none → 19d |
| 166 | 支付推进接口 | 2017-09-13 → 2017-10-13 (+30d) | 2017-09-13 → 2017-10-13 (+30d) |  | none → 19d |
| 167 | **前台** | 2017-09-13 → 2017-10-13 (+30d) | 2017-09-18 → 2017-10-13 (+25d) | 4d? → 1d? | none → 57d |
| 168 | **我的账户** | 2017-09-13 → 2017-10-13 (+30d) | 2017-09-13 → 2017-10-13 (+30d) |  | none → 57d |
| 169 | **个人主页** | 2017-09-13 → 2017-10-13 (+30d) | 2017-09-13 → 2017-10-13 (+30d) |  | 0d → 57d |
| 170 | 余额 | 2017-09-13 → 2017-10-13 (+30d) | 2017-09-13 → 2017-10-13 (+30d) |  | none → 19d |
| 171 | 我的投资 | 2017-09-13 → 2017-10-13 (+30d) | 2017-09-13 → 2017-10-13 (+30d) |  | none → 19d |
| 172 | 我的借款 | 2017-09-13 → 2017-10-13 (+30d) | 2017-09-13 → 2017-10-13 (+30d) |  | none → 19d |
| 173 | **个人设置** | 2017-09-13 → 2017-10-13 (+30d) | 2017-09-13 → 2017-10-13 (+30d) |  | none → 57d |
| 174 | 个人信息、工作信息、银行卡绑定、密码进行设置与修改 | 2017-09-13 → 2017-10-13 (+30d) | 2017-09-13 → 2017-10-13 (+30d) |  | none → 19d |
| 175 | **信息认证** | 2017-09-13 → 2017-10-13 (+30d) | 2017-09-13 → 2017-10-13 (+30d) |  | none → 57d |
| 176 | 实名认证(ID5) | 2017-09-13 → 2017-10-13 (+30d) | 2017-09-13 → 2017-10-13 (+30d) |  | none → 19d |
| 177 | 学历认证 | 2017-09-13 → 2017-10-13 (+30d) | 2017-09-13 → 2017-10-13 (+30d) |  | none → 19d |
| 178 | 手机认证 | 2017-09-13 → 2017-10-13 (+30d) | 2017-09-13 → 2017-10-13 (+30d) |  | none → 19d |
| 179 | 视频认证 | 2017-09-13 → 2017-10-13 (+30d) | 2017-09-13 → 2017-10-13 (+30d) |  | none → 19d |
| 180 | 信用认证 | 2017-09-13 → 2017-10-13 (+30d) | 2017-09-13 → 2017-10-13 (+30d) |  | none → 19d |
| 181 | **借款管理** | 2017-09-13 → 2017-10-13 (+30d) | 2017-09-13 → 2017-10-13 (+30d) |  | none → 57d |
| 182 | 发起借款 | 2017-09-13 → 2017-10-13 (+30d) | 2017-09-13 → 2017-10-13 (+30d) |  | none → 19d |
| 183 | 还款管理 | 2017-09-13 → 2017-10-13 (+30d) | 2017-09-13 → 2017-10-13 (+30d) |  | none → 19d |
| 184 | 已发布的借款 | 2017-09-13 → 2017-10-13 (+30d) | 2017-09-13 → 2017-10-13 (+30d) |  | none → 19d |
| 185 | 贷款统计 | 2017-09-13 → 2017-10-13 (+30d) | 2017-09-13 → 2017-10-13 (+30d) |  | none → 19d |
| 186 | **理财管理** | 2017-09-13 → 2017-10-13 (+30d) | 2017-09-13 → 2017-10-13 (+30d) |  | none → 57d |
| 187 | 我的投标 | 2017-09-13 → 2017-10-13 (+30d) | 2017-09-13 → 2017-10-13 (+30d) |  | none → 19d |
| 188 | 我关注的项目 | 2017-09-13 → 2017-10-13 (+30d) | 2017-09-13 → 2017-10-13 (+30d) |  | none → 19d |
| 189 | 理财统计 | 2017-09-13 → 2017-10-13 (+30d) | 2017-09-13 → 2017-10-13 (+30d) |  | none → 19d |
| 190 | 自动投标 | 2017-09-13 → 2017-10-13 (+30d) | 2017-09-13 → 2017-10-13 (+30d) |  | none → 19d |
| 191 | **债权转让** | 2017-09-13 → 2017-10-13 (+30d) | 2017-09-13 → 2017-10-13 (+30d) |  | none → 57d |
| 192 | 债权转让 | 2017-09-13 → 2017-10-13 (+30d) | 2017-09-13 → 2017-10-13 (+30d) |  | none → 19d |
| 193 | 债权竞拍 | 2017-09-13 → 2017-10-13 (+30d) | 2017-09-13 → 2017-10-13 (+30d) |  | none → 19d |
| 194 | **后台** | 2017-09-13 → 2017-10-13 (+30d) | 2017-09-13 → 2017-10-13 (+30d) |  | none → 57d |
| 195 | **审核管理** | 2017-09-13 → 2017-10-13 (+30d) | 2017-09-13 → 2017-10-13 (+30d) |  | none → 57d |
| 196 | 额度申请管理 | 2017-09-13 → 2017-10-13 (+30d) | 2017-09-13 → 2017-10-13 (+30d) |  | none → 19d |
| 197 | 债权管理 | 2017-09-13 → 2017-10-13 (+30d) | 2017-09-13 → 2017-10-13 (+30d) |  | none → 19d |
| 198 | 正在转让的债权 | 2017-09-13 → 2017-10-13 (+30d) | 2017-09-13 → 2017-10-13 (+30d) |  | none → 19d |
| 199 | 成功转让的债权 | 2017-09-13 → 2017-10-13 (+30d) | 2017-09-13 → 2017-10-13 (+30d) |  | none → 19d |
| 200 | 申请正在转让的债权 | 2017-09-13 → 2017-10-13 (+30d) | 2017-09-13 → 2017-10-13 (+30d) |  | none → 19d |
| 201 | 失败的债权 | 2017-09-13 → 2017-10-13 (+30d) | 2017-09-13 → 2017-10-13 (+30d) |  | none → 19d |
| 202 | **财务管理** | 2017-09-13 → 2017-10-13 (+30d) | 2017-09-13 → 2017-10-13 (+30d) |  | none → 57d |
| 203 | 充值提现审核 | 2017-09-13 → 2017-10-13 (+30d) | 2017-09-13 → 2017-10-13 (+30d) |  | none → 19d |
| 204 | 银行卡管理 | 2017-09-13 → 2017-10-13 (+30d) | 2017-09-13 → 2017-10-13 (+30d) |  | none → 19d |
| 205 | 用户资金管理 | 2017-09-13 → 2017-10-13 (+30d) | 2017-09-13 → 2017-10-13 (+30d) |  | none → 19d |
| 206 | 充值管理 | 2017-09-13 → 2017-10-13 (+30d) | 2017-09-13 → 2017-10-13 (+30d) |  | none → 19d |
| 207 | 充值记录 | 2017-09-13 → 2017-10-13 (+30d) | 2017-09-13 → 2017-10-13 (+30d) |  | none → 19d |
| 208 | 风险保障金 | 2017-09-13 → 2017-10-13 (+30d) | 2017-09-13 → 2017-10-13 (+30d) |  | none → 19d |
| 209 | **审核管理** | 2017-09-13 → 2017-10-13 (+30d) | 2017-09-13 → 2017-10-13 (+30d) |  | none → 57d |
| 210 | 额度申请管理 | 2017-09-13 → 2017-10-13 (+30d) | 2017-09-13 → 2017-10-13 (+30d) |  | none → 19d |
| 211 | 基本信息审核 | 2017-09-13 → 2017-10-13 (+30d) | 2017-09-13 → 2017-10-13 (+30d) |  | none → 19d |
| 212 | 新用户认证资料 | 2017-09-13 → 2017-10-13 (+30d) | 2017-09-13 → 2017-10-13 (+30d) |  | none → 19d |
| 213 | 基本信用资料认证 | 2017-09-13 → 2017-10-13 (+30d) | 2017-09-13 → 2017-10-13 (+30d) |  | none → 19d |
| 214 | 可选资料认证 | 2017-09-13 → 2017-10-13 (+30d) | 2017-09-13 → 2017-10-13 (+30d) |  | none → 19d |
| 215 | 认证资料统计 | 2017-09-13 → 2017-10-13 (+30d) | 2017-09-13 → 2017-10-13 (+30d) |  | none → 19d |
| 216 | 手机号码更改 | 2017-09-13 → 2017-10-13 (+30d) | 2017-09-13 → 2017-10-13 (+30d) |  | none → 19d |
| 217 | **借款管理** | 2017-09-13 → 2017-10-13 (+30d) | 2017-09-13 → 2017-10-13 (+30d) |  | none → 57d |
| 218 | 初审中的借款 | 2017-09-13 → 2017-10-13 (+30d) | 2017-09-13 → 2017-10-13 (+30d) |  | none → 19d |

| ID | Task | Start | Finish | Total float |
| --- | --- | --- | --- | --- |
| 219 | 招标中的借款 | 2017-09-13 → 2017-10-13 (+30d) | 2017-09-13 → 2017-10-13 (+30d) | none → 19d |
| 220 | 满标审核 | 2017-09-13 → 2017-10-13 (+30d) | 2017-09-13 → 2017-10-13 (+30d) | none → 19d |
| 221 | 流标的借款 | 2017-09-13 → 2017-10-13 (+30d) | 2017-09-13 → 2017-10-13 (+30d) | none → 19d |
| 222 | 所有的借款 | 2017-09-13 → 2017-10-13 (+30d) | 2017-09-13 → 2017-10-13 (+30d) | none → 19d |
| 223 | **贷后管理** | 2017-09-13 → 2017-10-13 (+30d) | 2017-09-13 → 2017-10-13 (+30d) | none → 57d |
| 224 | 待收款 | 2017-09-13 → 2017-10-13 (+30d) | 2017-09-13 → 2017-10-13 (+30d) | none → 19d |
| 225 | 逾期的还款 | 2017-09-13 → 2017-10-13 (+30d) | 2017-09-13 → 2017-10-13 (+30d) | none → 19d |
| 226 | 逾期垫付 | 2017-09-13 → 2017-10-13 (+30d) | 2017-09-13 → 2017-10-13 (+30d) | none → 19d |
| 227 | 最近3天的还款 | 2017-09-13 → 2017-10-13 (+30d) | 2017-09-13 → 2017-10-13 (+30d) | none → 19d |
| 228 | 已还款 | 2017-09-13 → 2017-10-13 (+30d) | 2017-09-13 → 2017-10-13 (+30d) | none → 19d |

## Version 5 (saved 2017-10-09)

Note of the change: 计划更新v.3

Last finish stays 2018-01-02.

Removed: 109 会员查询; 150 企业会员审核结果通知接口

Changed:

| ID | Task | Finish | Duration | Total float |
| --- | --- | --- | --- | --- |
| 93 | **业务类** | 2017-11-07 → 2017-11-06 (-1d) | 18d → 17d |  |
| 110 | **查询类** | 2017-10-13 → 2017-10-30 (+17d) | 1d? → 12d | 30d → none |
| 122 | **会员类** | 2017-10-13 → 2017-10-31 (+18d) | 1d? → 13d | 30d → none |
| 135 | **增值类** | 2017-10-13 → 2017-10-24 (+11d) | 1d? → 8d | 30d → none |
| 143 | **交易类** | 2017-10-13 → 2017-11-06 (+24d) | 1d? → 17d? | 30d → 0d |
| 144 | **订单处理结果类** | 2017-10-13 → 2017-10-19 (+6d) | 1d? → 5d | 30d → none |
| 149 | **第三方托管系统对接** | 2017-10-13 → 2017-11-06 (+24d) | 1d? → 17d? | 30d → 14d |
| 150 | 创建托管代收交易接口 | 2017-10-13 → 2017-11-06 (+24d) | 1d? → 17d | 19d → 14d |
| 165 | **前台** | 2017-10-13 → 2017-10-24 (+11d) | 1d? → 8d | 57d → 0d |
| 166 | **我的账户** | 2017-10-13 → 2017-10-24 (+11d) | 1d? → 8d | 57d → 0d |
| 167 | **个人主页** | 2017-10-13 → 2017-10-16 (+3d) | 1d? → 2d | 57d → none |
| 171 | **个人设置** | 2017-10-13 → 2017-10-24 (+11d) | 1d? → 8d | 57d → none |
| 173 | **信息认证** | 2017-10-13 → 2017-10-18 (+5d) | 1d? → 4d | 57d → none |
| 179 | **借款管理** | 2017-10-13 → 2017-10-19 (+6d) | 1d? → 5d | 57d → none |
| 184 | **理财管理** | 2017-10-13 → 2017-10-19 (+6d) | 1d? → 5d | 57d → none |
| 189 | **债权转让** | 2017-10-13 → 2017-10-19 (+6d) | 1d? → 5d | 57d → none |
| 192 | **后台** | 2017-10-13 → 2017-10-26 (+13d) | 1d? → 10d | 57d → 0d |
| 193 | **审核管理** | 2017-10-13 → 2017-10-26 (+13d) | 1d? → 10d | 57d → none |
| 200 | **财务管理** | 2017-10-13 → 2017-10-26 (+13d) | 1d? → 10d | 57d → none |
| 207 | **审核管理** | 2017-10-13 → 2017-10-26 (+13d) | 1d? → 10d | 57d → none |
| 215 | **借款管理** | 2017-10-13 → 2017-10-26 (+13d) | 1d? → 10d | 57d → none |
| 221 | **贷后管理** | 2017-10-13 → 2017-10-26 (+13d) | 1d? → 10d | 57d → none |

## Version 6 (saved 2017-10-09)

Note of the change: x

Last finish stays 2018-01-02. Complete tasks 44 → 50.

Added:

| ID | Task | Duration | Start | Finish | Resources |
| --- | --- | --- | --- | --- | --- |
| 193 | 参数设置 | 1d? | 2017-10-13 | 2017-10-13 |  |
| 228 | **参数配置** | 1d | 2017-10-13 | 2017-10-13 | 李林; 吴小刚 |
| 229 | **常用参数配置** | 1d | 2017-10-13 | 2017-10-13 | 李林; 吴小刚 |
| 230 | 第三方登陆配置 | 1d | 2017-10-13 | 2017-10-13 | 李林; 吴小刚 |
| 231 | 支付接口配置 | 1d | 2017-10-13 | 2017-10-13 | 李林; 吴小刚 |
| 232 | 线下充值银行 | 1d | 2017-10-13 | 2017-10-13 | 李林; 吴小刚 |
| 233 | 会员级别配置 | 1d | 2017-10-13 | 2017-10-13 | 李林; 吴小刚 |
| 234 | 提现银行设置 | 1d | 2017-10-13 | 2017-10-13 | 李林; 吴小刚 |
| 235 | **贷款相关参数** | 1d | 2017-10-13 | 2017-10-13 | 李林; 吴小刚 |
| 236 | 发标参数配置 | 1d | 2017-10-13 | 2017-10-13 | 李林; 吴小刚 |
| 237 | 费用设置 | 1d | 2017-10-13 | 2017-10-13 | 李林; 吴小刚 |
| 238 | **合同相关参数** | 1d | 2017-10-13 | 2017-10-13 | 李林; 吴小刚 |
| 239 | 各类通知信息设置 | 1d | 2017-10-13 | 2017-10-13 | 李林; 吴小刚 |
| 240 | 邮件通知信息 | 1d | 2017-10-13 | 2017-10-13 | 李林; 吴小刚 |
| 241 | 手机通知信息 | 1d | 2017-10-13 | 2017-10-13 | 李林; 吴小刚 |
| 242 | 站内信通知信息 | 1d | 2017-10-13 | 2017-10-13 | 李林; 吴小刚 |
| 243 | 信息通知设置 | 1d | 2017-10-13 | 2017-10-13 | 李林; 吴小刚 |
| 244 | 站内信管理 | 1d | 2017-10-13 | 2017-10-13 | 李林; 吴小刚 |

Changed:

| ID | Task | Start | Finish | Duration | Complete | Total float |
| --- | --- | --- | --- | --- | --- | --- |
| 1 | **计划** |  |  |  | 74% → 93% |  |
| 2 | 架构搭建 |  |  |  | 8% → 75% |  |
| 3 | **通用工具** |  |  |  | 31% → 63% |  |
| 4 | 短信 |  |  |  | 50% → 75% |  |
| 5 | 邮件 |  |  |  | 50% → 75% |  |
| 6 | excel处理 |  | 2017-08-16 A |  | 50% → 100% |  |
| 7 | 规则引擎 | 2017-09-25 A |  |  | 0% → 35% |  |
| 8 | **用户/员工/系统管理** |  |  |  | 96% → 100% |  |
| 12 | api文档编写 |  | 2017-09-15 A |  | 75% → 100% |  |
| 27 | **用户/会员** |  | 2017-10-03 A |  | 80% → 100% |  |
| 31 | api文档编写 | 2017-09-18 A | 2017-09-22 A |  | 0% → 100% |  |
| 32 | **功能开发** |  |  |  | 90% → 100% | 0d → none |
| 33 | **前台** |  | 2017-09-08 A |  | 82% → 100% | 0d → none |
| 39 | **个人设置** |  | 2017-09-08 A |  | 71% → 100% | 0d → none |
| 41 | **信息完善** |  | 2017-09-08 A |  | 0% → 100% |  |
| 42 | 基本信息 | 2017-09-08 A | 2017-09-08 A |  | 0% → 100% |  |
| 43 | 模板扩展信息 | 2017-09-08 A | 2017-09-08 A |  | 0% → 100% |  |
| 62 | **用户/渠道商** |  |  |  | 88% → 100% |  |
| 66 | api文档编写 |  | 2017-09-15 A |  | 60% → 100% |  |
| 192 | **后台** |  |  | 10d → 10d? |  |  |

## Version 7 (saved 2017-10-10)

Note of the change: x

Last finish stays 2018-01-02.

Changed:

| ID | Task | Finish | Duration | Total float |
| --- | --- | --- | --- | --- |
| 228 | **参数配置** | 2017-10-13 → 2017-10-18 (+5d) | 1d → 4d |  |
| 229 | **常用参数配置** | 2017-10-13 → 2017-10-18 (+5d) | 1d → 4d | 0d → none |
| 235 | **贷款相关参数** | 2017-10-13 → 2017-10-16 (+3d) | 1d → 2d | 0d → none |
| 238 | **合同相关参数** | 2017-10-13 → 2017-10-17 (+4d) | 1d → 3d |  |

## Version 8 (saved 2017-10-30)

Note of the change: x

Last finish stays 2018-01-02.

Removed: 81 业务接口; 82 账户类; 83 个人账户; 84 企业账户; 85 借款人账户; 86 投资人账户; 87 平台账户; 88 担保方账户; 89 保证金账户; 90 冻结账户; 91 内部中间收款账户; 92 内部中间还款账户; 93 业务类; 94 开户; 95 设置密码; 96 修改密码; 97 实名认证; 98 鉴权认证; 99 授权扣款; 100 绑卡; 101 充值; 102 提现; 103 冻结; 104 解冻; 105 投资; 106 还款; 107 退款; 108 代收; 109 代付; 110 查询类; 111 资金明细查询; 112 交易查询; 113 充值查询; 114 提现查询; 115 退款查询; 116 代收查询; 117 代付查询; 118 结果查询; 119 余额查询; 120 认证信息查询; 121 银行卡查询; 122 会员类; 123 创建激活会员接口; 124 设置实名信息接口; 125 绑定认证信息接口; 126 解绑认证信息接口; 127 查询认证信息接口; 128 绑定银行卡接口; 129 解绑银行卡接口; 130 查询银行卡接口; 131 查询余额接口; 132 查询收支明细接口; 133 冻结余额接口; 134 解冻余额接口; 135 增值类; 136 货币基金账户; 137 货币基金选择; 138 自动转入; 139 自动赎回到账户; 140 自动赎回到卡; 141 自动赎回份额投资; 142 收益自动转入继续财富增值; 143 交易类; 144 订单处理结果类; 145 交易结果通知接口; 146 退款结果通知接口; 147 充值结果通知接口; 148 提现结果通知接口; 149 第三方托管系统对接; 150 创建托管代收交易接口; 151 创建单笔托管代付交易接口; 152 创建批量托管代付交易接口; 153 托管交易支付接口; 154 支付结果查询接口; 155 托管交易查询接口; 156 托管交易批次查询接口; 157 托管退款接口; 158 托管退款查询接口; 159 托管充值接口; 160 托管充值查询接口; 161 托管提现接口; 162 托管提现查询接口; 163 转账接口; 164 支付推进接口
