# Simple Project Plan

How a schedule from MS Project changed from version to version. A marks actual dates.

## Version 1 (saved 2017-10-30)

Note of the change: x

| ID | WBS | Task | Duration | Start | Finish | Predecessors | Complete | Constraint |
| --- | --- | --- | --- | --- | --- | --- | --- | --- |
| 1 | 1 | **计划** | 4d | 2017-09-18 | 2017-09-21 |  | 93% |  |
| 2 |  | 架构搭建 | 10d | 2017-07-07 A | 2017-07-20 |  | 75% |  |
| 3 | 1.2 | **通用工具** | 4d | 2017-08-07 A | 2017-08-10 |  | 63% |  |
| 4 |  | 短信 | 4d | 2017-08-07 A | 2017-08-10 |  | 75% |  |
| 5 |  | 邮件 | 2d | 2017-08-11 A | 2017-08-14 |  | 75% |  |
| 6 |  | excel处理 | 2d | 2017-08-15 A | 2017-08-16 A |  | 100% |  |
| 7 |  | 规则引擎 | 5d | 2017-09-25 A | 2017-09-29 |  | 35% |  |
| 8 | 1.3 | **用户/员工/系统管理** | 37d | 2017-07-07 A | 2017-08-28 |  | 100% |  |
| 9 |  | 需求分析 | 2d | 2017-07-07 A | 2017-07-10 A |  | 100% |  |
| 10 |  | 方案设计 | 3d | 2017-07-13 A | 2017-07-17 A | 9 | 100% |  |
| 11 |  | 数据模型 | 4d | 2017-07-19 A | 2017-07-24 A | 9 | 100% |  |
| 12 |  | api文档编写 | 5d | 2017-09-11 A | 2017-09-15 A |  | 100% |  |
| 13 | 1.3.5 | **功能开发** | 25d | 2017-07-25 A | 2017-08-28 |  | 100% |  |
| 14 |  | 登录服务 | 2d | 2017-07-25 A | 2017-07-26 A | 9, 10, 11, 24 | 100% |  |
| 15 |  | 系统域管理 | 2d | 2017-07-26 A | 2017-07-27 A | 9, 10, 11, 24 | 100% |  |
| 16 |  | 组织机构 | 3d | 2017-07-28 A | 2017-08-01 A | 9, 10, 11, 24 | 100% | finish no earlier than 2017-07-28 |
| 17 | 1.3.5.4 | **用户管理** | 4d | 2017-08-02 A | 2017-08-07 | 9, 10, 11, 24 | 100% |  |
| 18 |  | 批量导入 | 2d | 2017-08-08 A | 2017-08-09 A | 9, 10, 11, 24 | 100% |  |
| 19 |  | 功能(权限)管理 | 3d | 2017-08-14 A | 2017-08-16 A | 9, 10, 11, 24 | 100% |  |
| 20 |  | 角色管理 | 2d | 2017-08-07 A | 2017-08-08 A | 9, 10, 11, 24 | 100% |  |
| 21 |  | 菜单管理 | 2d | 2017-08-17 A | 2017-08-18 A | 9, 10, 11, 24 | 100% |  |
| 22 |  | 数据字典管理 | 2d | 2017-08-23 A | 2017-08-24 A | 9, 10, 11, 24 | 100% |  |
| 23 | 1.3.5.9 | **日志管理** | 3d | 2017-08-25 | 2017-08-29 A | 9, 10, 11 | 100% |  |
| 24 |  | 自定义日志注解 | 1d | 2017-08-21 A | 2017-08-21 A |  | 100% |  |
| 25 |  | 登录日志 | 1d | 2017-08-22 A | 2017-08-22 A | 9, 10, 11, 24 | 100% |  |
| 26 |  | 操作日志 | 1d | 2017-08-23 A | 2017-08-23 A | 9, 10, 11, 24 | 100% |  |
| 27 | 1.4 | **用户/会员** | 22d | 2017-09-04 | 2017-10-03 A |  | 100% |  |
| 28 |  | 需求分析 | 2d | 2017-09-13 A | 2017-09-14 A |  | 100% |  |
| 29 |  | 方案设计 | 3d | 2017-09-13 A | 2017-09-15 A |  | 100% |  |
| 30 |  | 数据模型 | 4d | 2017-09-13 A | 2017-09-18 A |  | 100% |  |
| 31 |  | api文档编写 | 5d | 2017-09-18 A | 2017-09-22 A |  | 100% |  |
| 32 | 1.4.5 | **功能开发** | 14d | 2017-09-01 A | 2017-09-20 |  | 100% |  |
| 33 | 1.4.5.1 | **前台** | 6d | 2017-09-01 A | 2017-09-08 A |  | 100% |  |
| 34 |  | 注册 | 1d | 2017-09-04 A | 2017-09-04 A |  | 100% |  |
| 35 |  | 登录/登出+日志 | 1d | 2017-09-01 A | 2017-09-01 A |  | 100% |  |
| 36 | 1.4.5.1.3 | **找回密码** | 1d | 2017-09-01 A | 2017-09-01 A |  | 100% |  |
| 37 |  | 密保手机找回 | 1d | 2017-09-01 A | 2017-09-01 A |  | 100% |  |
| 38 |  | 密保邮箱找回 | 1d | 2017-09-01 A | 2017-09-01 A |  | 100% |  |
| 39 | 1.4.5.1.4 | **个人设置** | 5d | 2017-09-04 A | 2017-09-08 A |  | 100% |  |
| 40 |  | 实名认证 | 1d | 2017-09-07 A | 2017-09-07 A |  | 100% |  |
| 41 | 1.4.5.1.4.2 | **信息完善** | 1d | 2017-09-08 A | 2017-09-08 A |  | 100% |  |
| 42 |  | 基本信息 | 1d | 2017-09-08 A | 2017-09-08 A |  | 100% |  |
| 43 |  | 模板扩展信息 | 1d | 2017-09-08 A | 2017-09-08 A |  | 100% |  |
| 44 |  | 登录密码-设置/修改 | 1d | 2017-09-04 A | 2017-09-04 A |  | 100% |  |
| 45 |  | 手机号码-绑定/修改 | 1d | 2017-09-06 A | 2017-09-06 A |  | 100% |  |
| 46 |  | 交易密码-设置/修改/找回 | 1d | 2017-09-06 A | 2017-09-06 A |  | 100% |  |
| 47 |  | 电子邮箱-绑定/修改 | 1d | 2017-09-07 A | 2017-09-07 A |  | 100% |  |
| 48 | 1.4.5.2 | **后台** | 13d | 2017-09-04 A | 2017-09-20 |  | 100% |  |
| 49 | 1.4.5.2.1 | **客户** | 3d | 2017-09-04 A | 2017-09-06 A |  | 100% |  |
| 50 | 1.4.5.2.1.1 | **实名认证** | 1d | 2017-09-04 A | 2017-09-04 A |  | 100% |  |
| 51 |  | 客户实名认证日志 | 1d | 2017-09-04 A | 2017-09-04 A |  | 100% |  |
| 52 |  | 会员信息 | 1d | 2017-09-04 A | 2017-09-04 A |  | 100% |  |
| 53 |  | 账户快照快照 | 1d | 2017-09-04 A | 2017-09-04 A |  | 100% |  |
| 54 |  | 标签设置 | 1d | 2017-09-04 A | 2017-09-04 A |  | 100% |  |
| 55 |  | 黑名单设置 | 1d | 2017-09-04 A | 2017-09-04 A |  | 100% |  |
| 56 |  | 登录日志 | 1d | 2017-09-04 A | 2017-09-04 A |  | 100% |  |
| 57 |  | 网签协议记录 | 1d | 2017-09-04 A | 2017-09-04 A |  | 100% |  |
| 58 |  | 业务类型 | 1d | 2017-09-04 A | 2017-09-04 A |  | 100% |  |
| 59 |  | 标签管理 | 1d | 2017-09-04 A | 2017-09-04 A |  | 100% |  |
| 60 | 1.4.5.2.4 | **档案模板管理** | 1d | 2017-09-04 A | 2017-09-04 A |  | 100% |  |
| 61 |  | 模板属性 | 1d | 2017-09-04 A | 2017-09-04 A |  | 100% |  |
| 62 | 1.5 | **用户/渠道商** | 26d | 2017-08-07 A | 2017-09-11 |  | 100% |  |
| 63 |  | 需求分析 | 2d | 2017-08-07 A | 2017-08-08 A |  | 100% |  |
| 64 |  | 方案设计 | 2d | 2017-08-09 A | 2017-08-10 A |  | 100% |  |
| 65 |  | 数据模型 | 2d | 2017-08-11 A | 2017-08-14 A |  | 100% |  |
| 66 |  | api文档编写 | 5d | 2017-09-11 A | 2017-09-15 A |  | 100% |  |
| 67 | 1.5.5 | **功能开发** | 18d | 2017-08-15 | 2017-09-07 A |  | 100% |  |
| 68 | 1.5.5.1 | **前台** | 8d | 2017-08-15 A | 2017-08-24 A |  | 100% |  |
| 69 |  | 登录/登出 | 1d | 2017-08-15 A | 2017-08-15 A |  | 100% |  |
| 70 |  | 找回密码 | 1d | 2017-08-15 A | 2017-08-15 A |  | 100% |  |

| ID | WBS | Task | Duration | Start | Finish | Complete | Total float | Constraint |
| --- | --- | --- | --- | --- | --- | --- | --- | --- |
| 71 |  | 信息设置 | 1d | 2017-08-15 A | 2017-08-15 A | 100% |  |  |
| 72 | 1.5.5.2 | **后台** | 10d | 2017-08-14 A | 2017-08-25 A | 100% |  |  |
| 73 | 1.5.5.2.1 | **渠道商维护** | 3d | 2017-08-14 A | 2017-08-16 A | 100% |  |  |
| 74 |  | 批量导入 | 1d | 2017-08-15 A | 2017-08-15 A | 100% |  |  |
| 75 |  | 渠道商分类 | 2d | 2017-08-17 A | 2017-08-18 A | 100% |  |  |
| 76 | 2 | **账户/系统** | 35d? | 2017-09-13 | 2017-10-31 |  | 0d |  |
| 77 |  | 需求分析 | 6d | 2017-09-13 | 2017-09-20 |  | 74d |  |
| 78 |  | 方案设计 | 5d | 2017-09-25 | 2017-09-29 |  | 67d | start no earlier than 2017-09-25 |
| 79 |  | 数据模型 | 17d | 2017-10-09 | 2017-10-31 |  | 0d | finish no earlier than 2017-10-31 |
| 80 | 2.4 | **功能开发** | 1d? | 2017-09-13 | 2017-09-13 |  | 0d |  |
| 81 | 2.4.1 | **后台** | 1d? | 2017-09-13 | 2017-09-13 |  | 34d |  |
| 82 | 2.4.1.1 | **账户资金管理** | 1d? | 2017-09-13 | 2017-09-13 |  | 34d |  |
| 83 |  | 用户资金汇总 | 1d? | 2017-09-13 | 2017-09-13 |  | 34d |  |
| 84 |  | 充值列表 | 1d? | 2017-09-13 | 2017-09-13 |  | 34d |  |
| 85 |  | 提现列表 | 1d? | 2017-09-13 | 2017-09-13 |  | 34d |  |
| 86 |  | 资金记录 | 1d? | 2017-09-13 | 2017-09-13 |  | 34d |  |
| 87 |  | 其它费用操作 | 1d? | 2017-09-13 | 2017-09-13 |  | 34d |  |
| 88 | 2.4.1.2 | **审核管理** | 1d? | 2017-09-13 | 2017-09-13 |  | 34d |  |
| 89 |  | 额度申请管理 | 1d? | 2017-09-13 | 2017-09-13 |  | 34d |  |
| 90 |  | 基本信息审核 | 1d? | 2017-09-13 | 2017-09-13 |  | 34d |  |
| 91 |  | 新用户认证资料 | 1d? | 2017-09-13 | 2017-09-13 |  | 34d |  |
| 92 |  | 基本信用资料认证 | 1d? | 2017-09-13 | 2017-09-13 |  | 34d |  |
| 93 |  | 可选资料认证 | 1d? | 2017-09-13 | 2017-09-13 |  | 34d |  |
| 94 |  | 认证资料统计 | 1d? | 2017-09-13 | 2017-09-13 |  | 34d |  |
| 95 |  | 手机号码更改 | 1d? | 2017-09-13 | 2017-09-13 |  | 34d |  |
| 96 | 2.4.1.3 | **借款管理** | 1d? | 2017-09-13 | 2017-09-13 |  | 34d |  |
| 97 |  | 初审中的借款 | 1d? | 2017-09-13 | 2017-09-13 |  | 34d |  |
| 98 |  | 招标中的借款 | 1d? | 2017-09-13 | 2017-09-13 |  | 34d |  |
| 99 |  | 满标审核 | 1d? | 2017-09-13 | 2017-09-13 |  | 34d |  |
| 100 |  | 流标的借款 | 1d? | 2017-09-13 | 2017-09-13 |  | 34d |  |
| 101 |  | 所有的借款 | 1d? | 2017-09-13 | 2017-09-13 |  | 34d |  |
| 102 | 2.4.1.4 | **贷后管理** | 1d? | 2017-09-13 | 2017-09-13 |  | 34d |  |
| 103 |  | 待收款 | 1d? | 2017-09-13 | 2017-09-13 |  | 34d |  |
| 104 |  | 逾期的还款 | 1d? | 2017-09-13 | 2017-09-13 |  | 34d |  |
| 105 |  | 逾期垫付 | 1d? | 2017-09-13 | 2017-09-13 |  | 34d |  |
| 106 |  | 最近3天的还款 | 1d? | 2017-09-13 | 2017-09-13 |  | 34d |  |
| 107 |  | 已还款 | 1d? | 2017-09-13 | 2017-09-13 |  | 34d |  |
| 108 | 2.4.1.5 | **参数配置** | 1d | 2017-09-13 | 2017-09-13 |  | 34d |  |
| 109 | 2.4.1.5.1 | **常用参数配置** | 1d | 2017-09-13 | 2017-09-13 |  | 34d |  |
| 110 |  | 支付接口配置 | 1d | 2017-09-13 | 2017-09-13 |  | 34d |  |
| 111 |  | 可用充值银行 | 1d | 2017-09-13 | 2017-09-13 |  | 34d |  |
| 112 |  | 会员级别配置 | 1d | 2017-09-13 | 2017-09-13 |  | 34d |  |
| 113 |  | 提现银行设置 | 1d | 2017-09-13 | 2017-09-13 |  | 34d |  |
| 114 | 2.4.1.5.2 | **贷款相关参数** | 1d | 2017-09-13 | 2017-09-13 |  | 34d |  |
| 115 |  | 发标参数配置 | 1d | 2017-09-13 | 2017-09-13 |  | 34d |  |
| 116 |  | 费用设置 | 1d | 2017-09-13 | 2017-09-13 |  | 34d |  |
| 117 | 2.4.1.5.3 | **合同相关参数** | 1d | 2017-09-13 | 2017-09-13 |  | 34d |  |
| 118 |  | 各类通知信息设置 | 1d | 2017-09-13 | 2017-09-13 |  | 34d |  |
| 119 |  | 邮件通知信息 | 1d | 2017-09-13 | 2017-09-13 |  | 34d |  |
| 120 |  | 手机通知信息 | 1d | 2017-09-13 | 2017-09-13 |  | 34d |  |
| 121 |  | 站内信通知信息 | 1d | 2017-09-13 | 2017-09-13 |  | 34d |  |
| 122 |  | 信息通知设置 | 1d | 2017-09-13 | 2017-09-13 |  | 34d |  |
| 123 |  | 站内信管理 | 1d | 2017-09-13 | 2017-09-13 |  | 34d |  |
| 124 | 2.4.2 | **前台** | 1d? | 2017-09-13 | 2017-09-13 |  | 0d |  |
| 125 | 2.4.2.1 | **我的账户** | 1d? | 2017-09-13 | 2017-09-13 |  | 0d |  |
| 126 | 2.4.2.1.1 | **账户总览** | 1d? | 2017-09-13 | 2017-09-13 |  | 0d |  |
| 127 |  | 账户余额 | 1d? | 2017-09-13 | 2017-09-13 |  | 34d |  |
| 128 |  | 我的投资记录 | 1d? | 2017-09-13 | 2017-09-13 |  | 34d |  |
| 129 |  | 我的借款记录 | 1d? | 2017-09-13 | 2017-09-13 |  | 34d |  |
| 130 |  | 最新资金记录 | 1d? | 2017-09-13 | 2017-09-13 |  |  |  |
| 131 | 2.4.2.1.2 | **资金明细** | 1d? | 2017-09-13 | 2017-09-13 |  | 0d |  |
| 132 |  | 资金明细 | 1d? | 2017-09-13 | 2017-09-13 |  |  |  |
| 133 |  | 账户银行卡绑定 | 1d? | 2017-09-13 | 2017-09-13 |  |  |  |
| 134 |  | 账户充值 | 1d? | 2017-09-13 | 2017-09-13 |  |  |  |
| 135 |  | 充值记录 | 1d? | 2017-09-13 | 2017-09-13 |  |  |  |
| 136 |  | 账户提现 | 1d? | 2017-09-13 | 2017-09-13 |  |  |  |
| 137 |  | 提现记录 | 1d? | 2017-09-13 | 2017-09-13 |  |  |  |
| 138 | 2.4.2.1.3 | **个人设置** | 1d? | 2017-09-13 | 2017-09-13 |  |  |  |
| 139 |  | 个人信息、工作信息、银行卡绑定、密码进行设置与修改 | 1d? | 2017-09-13 | 2017-09-13 |  | 0d |  |
| 140 | 2.4.2.1.3.2 | **信息认证** | 1d? | 2017-09-13 | 2017-09-13 |  | 0d |  |

| ID | Task | Duration | Start | Finish | Total float |
| --- | --- | --- | --- | --- | --- |
| 141 | 实名认证(ID5) | 1d? | 2017-09-13 | 2017-09-13 | 0d |
| 142 | 学历认证 | 1d? | 2017-09-13 | 2017-09-13 | 0d |
| 143 | 手机认证 | 1d? | 2017-09-13 | 2017-09-13 | 0d |
| 144 | 视频认证 | 1d? | 2017-09-13 | 2017-09-13 | 0d |
| 145 | 信用认证 | 1d? | 2017-09-13 | 2017-09-13 | 0d |

## Version 2 (saved 2017-10-31)

Note of the change: Merge branch 'master' of http://192.168.101.16/wuxiaogang/hsd-servers

Last finish 2017-10-31 → 2017-11-06 (+6d).

Changed:

| ID | Task | Start | Finish | Duration | Total float | Other |
| --- | --- | --- | --- | --- | --- | --- |
| 76 | **账户/系统** |  | 2017-10-31 → 2017-11-06 (+6d) | 35d? → 38.5d? |  |  |
| 80 | **功能开发** | 2017-09-13 → 2017-11-01 (+49d) | 2017-09-13 → 2017-11-01 (+49d) |  | 0d → none |  |
| 81 | **后台** | 2017-09-13 → 2017-11-01 (+49d) | 2017-09-13 → 2017-11-06 (+54d) | 1d? → 3.5d? | 34d → -2.5d |  |
| 82 | **账户资金管理** | 2017-09-13 → 2017-11-01 (+49d) | 2017-09-13 → 2017-11-06 (+54d) | 1d? → 3.5d? | 34d → -2.5d |  |
| 83 | 用户资金汇总 | 2017-09-13 → 2017-11-01 (+49d) | 2017-09-13 → 2017-11-02 (+50d) | 1d? → 2d? | 34d → -1d | constraint none → start no earlier than 2017-11-01 |
| 84 | 充值列表 | 2017-09-13 → 2017-11-03 (+51d) | 2017-09-13 → 2017-11-03 (+51d) | 1d? → 0.5d | 34d → -1.5d | constraint none → start no earlier than 2017-11-03 |
| 85 | 提现列表 | 2017-09-13 → 2017-11-03 (+51d) | 2017-09-13 → 2017-11-03 (+51d) | 1d? → 0.5d? | 34d → -1.5d | constraint none → start no earlier than 2017-11-03 |
| 86 | 资金记录 | 2017-09-13 → 2017-11-06 (+54d) | 2017-09-13 → 2017-11-06 (+54d) | 1d? → 0.5d? | 34d → -2.5d | constraint none → start no earlier than 2017-11-06 |
| 87 | 其它费用操作 | 2017-09-13 → 2017-11-06 (+54d) | 2017-09-13 → 2017-11-06 (+54d) | 1d? → 0.5d? | 34d → -2.5d | constraint none → start no earlier than 2017-11-06 |
| 88 | **审核管理** | 2017-09-13 → 2017-11-01 (+49d) | 2017-09-13 → 2017-11-01 (+49d) |  | 34d → 0d |  |
| 89 | 额度申请管理 | 2017-09-13 → 2017-11-01 (+49d) | 2017-09-13 → 2017-11-01 (+49d) |  | 34d → 0d |  |
| 90 | 基本信息审核 | 2017-09-13 → 2017-11-01 (+49d) | 2017-09-13 → 2017-11-01 (+49d) |  | 34d → 0d |  |
| 91 | 新用户认证资料 | 2017-09-13 → 2017-11-01 (+49d) | 2017-09-13 → 2017-11-01 (+49d) |  | 34d → 0d |  |
| 92 | 基本信用资料认证 | 2017-09-13 → 2017-11-01 (+49d) | 2017-09-13 → 2017-11-01 (+49d) |  | 34d → 0d |  |
| 93 | 可选资料认证 | 2017-09-13 → 2017-11-01 (+49d) | 2017-09-13 → 2017-11-01 (+49d) |  | 34d → 0d |  |
| 94 | 认证资料统计 | 2017-09-13 → 2017-11-01 (+49d) | 2017-09-13 → 2017-11-01 (+49d) |  | 34d → 0d |  |
| 95 | 手机号码更改 | 2017-09-13 → 2017-11-01 (+49d) | 2017-09-13 → 2017-11-01 (+49d) |  | 34d → 0d |  |
| 96 | **借款管理** | 2017-09-13 → 2017-11-01 (+49d) | 2017-09-13 → 2017-11-01 (+49d) |  | 34d → 0d |  |
| 97 | 初审中的借款 | 2017-09-13 → 2017-11-01 (+49d) | 2017-09-13 → 2017-11-01 (+49d) |  | 34d → 0d |  |
| 98 | 招标中的借款 | 2017-09-13 → 2017-11-01 (+49d) | 2017-09-13 → 2017-11-01 (+49d) |  | 34d → 0d |  |
| 99 | 满标审核 | 2017-09-13 → 2017-11-01 (+49d) | 2017-09-13 → 2017-11-01 (+49d) |  | 34d → 0d |  |
| 100 | 流标的借款 | 2017-09-13 → 2017-11-01 (+49d) | 2017-09-13 → 2017-11-01 (+49d) |  | 34d → 0d |  |
| 101 | 所有的借款 | 2017-09-13 → 2017-11-01 (+49d) | 2017-09-13 → 2017-11-01 (+49d) |  | 34d → 0d |  |
| 102 | **贷后管理** | 2017-09-13 → 2017-11-01 (+49d) | 2017-09-13 → 2017-11-01 (+49d) |  | 34d → 0d |  |
| 103 | 待收款 | 2017-09-13 → 2017-11-01 (+49d) | 2017-09-13 → 2017-11-01 (+49d) |  | 34d → 0d |  |
| 104 | 逾期的还款 | 2017-09-13 → 2017-11-01 (+49d) | 2017-09-13 → 2017-11-01 (+49d) |  | 34d → 0d |  |
| 105 | 逾期垫付 | 2017-09-13 → 2017-11-01 (+49d) | 2017-09-13 → 2017-11-01 (+49d) |  | 34d → 0d |  |
| 106 | 最近3天的还款 | 2017-09-13 → 2017-11-01 (+49d) | 2017-09-13 → 2017-11-01 (+49d) |  | 34d → 0d |  |
| 107 | 已还款 | 2017-09-13 → 2017-11-01 (+49d) | 2017-09-13 → 2017-11-01 (+49d) |  | 34d → 0d |  |
| 108 | **参数配置** | 2017-09-13 → 2017-11-01 (+49d) | 2017-09-13 → 2017-11-01 (+49d) |  | 34d → 0d |  |
| 109 | **常用参数配置** | 2017-09-13 → 2017-11-01 (+49d) | 2017-09-13 → 2017-11-01 (+49d) |  | 34d → 0d |  |
| 110 | 支付接口配置 | 2017-09-13 → 2017-11-01 (+49d) | 2017-09-13 → 2017-11-01 (+49d) |  | 34d → 0d |  |
| 111 | 可用充值银行 | 2017-09-13 → 2017-11-01 (+49d) | 2017-09-13 → 2017-11-01 (+49d) |  | 34d → 0d |  |
| 112 | 会员级别配置 | 2017-09-13 → 2017-11-01 (+49d) | 2017-09-13 → 2017-11-01 (+49d) |  | 34d → 0d |  |
| 113 | 提现银行设置 | 2017-09-13 → 2017-11-01 (+49d) | 2017-09-13 → 2017-11-01 (+49d) |  | 34d → 0d |  |
| 114 | **贷款相关参数** | 2017-09-13 → 2017-11-01 (+49d) | 2017-09-13 → 2017-11-01 (+49d) |  | 34d → 0d |  |
| 115 | 发标参数配置 | 2017-09-13 → 2017-11-01 (+49d) | 2017-09-13 → 2017-11-01 (+49d) |  | 34d → 0d |  |
| 116 | 费用设置 | 2017-09-13 → 2017-11-01 (+49d) | 2017-09-13 → 2017-11-01 (+49d) |  | 34d → 0d |  |
| 117 | **合同相关参数** | 2017-09-13 → 2017-11-01 (+49d) | 2017-09-13 → 2017-11-01 (+49d) |  | 34d → 0d |  |
| 118 | 各类通知信息设置 | 2017-09-13 → 2017-11-01 (+49d) | 2017-09-13 → 2017-11-01 (+49d) |  | 34d → 0d |  |
| 119 | 邮件通知信息 | 2017-09-13 → 2017-11-01 (+49d) | 2017-09-13 → 2017-11-01 (+49d) |  | 34d → 0d |  |
| 120 | 手机通知信息 | 2017-09-13 → 2017-11-01 (+49d) | 2017-09-13 → 2017-11-01 (+49d) |  | 34d → 0d |  |
| 121 | 站内信通知信息 | 2017-09-13 → 2017-11-01 (+49d) | 2017-09-13 → 2017-11-01 (+49d) |  | 34d → 0d |  |
| 122 | 信息通知设置 | 2017-09-13 → 2017-11-01 (+49d) | 2017-09-13 → 2017-11-01 (+49d) |  | 34d → 0d |  |
| 123 | 站内信管理 | 2017-09-13 → 2017-11-01 (+49d) | 2017-09-13 → 2017-11-01 (+49d) |  | 34d → 0d |  |
| 124 | **前台** |  | 2017-09-13 → 2017-11-01 (+49d) | 1d? → 36d? |  |  |
| 125 | **我的账户** |  | 2017-09-13 → 2017-11-01 (+49d) | 1d? → 36d? |  |  |
| 126 | **账户总览** |  | 2017-09-13 → 2017-11-01 (+49d) | 1d? → 36d? |  |  |
| 127 | 账户余额 | 2017-09-13 → 2017-11-01 (+49d) | 2017-09-13 → 2017-11-01 (+49d) |  | 34d → 0d |  |
| 128 | 我的投资记录 | 2017-09-13 → 2017-11-01 (+49d) | 2017-09-13 → 2017-11-01 (+49d) |  | 34d → 0d |  |
| 129 | 我的借款记录 | 2017-09-13 → 2017-11-01 (+49d) | 2017-09-13 → 2017-11-01 (+49d) |  | 34d → 0d |  |

## Version 3 (saved 2017-12-27)

Note of the change: 综合账户系统编码

Last finish 2017-11-06 → 2018-02-01 (+87d).

Added:

| ID | Task | Duration | Start | Finish | Resources |
| --- | --- | --- | --- | --- | --- |
| 83 | 账户模板 | 2d | 2017-12-26 | 2017-12-27 | 吴小刚 |
| 84 | **个人账户查看** | 7d | 2017-12-28 | 2018-01-05 | 吴小刚 |
| 85 | 资金账户 | 2d | 2017-12-28 | 2017-12-29 | 吴小刚 |
| 86 | 贵金属账户 | 2d | 2018-01-02 | 2018-01-03 | 吴小刚 |
| 87 | 网贷账户 | 2d | 2018-01-04 | 2018-01-05 | 吴小刚 |
| 88 | **个人账户日志** | 5d | 2018-01-08 | 2018-01-12 | 吴小刚 |
| 89 | 交易记录 | 1d | 2018-01-08 | 2018-01-08 | 吴小刚 |
| 90 | 资金冻结记录 | 1d | 2018-01-09 | 2018-01-09 | 吴小刚 |
| 92 | 提现流水 | 1d | 2018-01-11 | 2018-01-11 | 吴小刚 |
| 93 | 操作日志 | 1d | 2018-01-12 | 2018-01-12 | 吴小刚 |
| 94 | **接口** | 13.5d | 2018-01-15 | 2018-02-01 | 吴小刚 |
| 95 | 资金账户 | 1.5d | 2018-01-15 | 2018-01-16 | 吴小刚 |
| 96 | 贵金属账户 | 1.5d | 2018-01-16 | 2018-01-17 | 吴小刚 |
| 97 | 网贷账户 | 1.5d | 2018-01-17 | 2018-01-18 | 吴小刚 |
| 98 | 三方账户绑定 | 1.5d | 2018-01-18 | 2018-01-19 | 吴小刚 |
| 99 | 交易记录 | 1.5d | 2018-01-19 | 2018-01-22 | 吴小刚 |
| 100 | 资金冻结记录 | 1.5d | 2018-01-23 | 2018-01-24 | 吴小刚 |
| 101 | 充值记录 | 1.5d | 2018-01-25 | 2018-01-26 | 吴小刚 |
| 102 | 提现流水 | 1.5d | 2018-01-29 | 2018-01-30 | 吴小刚 |
| 103 | 操作日志 | 1.5d | 2018-01-31 | 2018-02-01 | 吴小刚 |

Removed: 83 用户资金汇总; 84 充值列表; 85 提现列表; 86 资金记录; 87 其它费用操作; 88 审核管理; 89 额度申请管理; 90 基本信息审核; 91 新用户认证资料; 92 基本信用资料认证; 93 可选资料认证; 94 认证资料统计; 95 手机号码更改; 96 借款管理; 97 初审中的借款; 98 招标中的借款; 99 满标审核; 100 流标的借款; 101 所有的借款; 102 贷后管理; 103 待收款; 104 逾期的还款; 105 逾期垫付; 106 最近3天的还款; 107 已还款; 108 参数配置; 109 常用参数配置; 110 支付接口配置; 111 可用充值银行; 112 会员级别配置; 113 提现银行设置; 114 贷款相关参数; 115 发标参数配置; 116 费用设置; 117 合同相关参数; 118 各类通知信息设置; 119 邮件通知信息; 120 手机通知信息; 121 站内信通知信息; 122 信息通知设置; 123 站内信管理; 124 前台; 125 我的账户; 126 账户总览; 127 账户余额; 128 我的投资记录; 129 我的借款记录; 130 最新资金记录; 131 资金明细; 132 资金明细; 133 账户银行卡绑定; 134 账户充值; 136 账户提现; 137 提现记录; 138 个人设置; 139 个人信息、工作信息、银行卡绑定、密码进行设置与修改; 140 信息认证; 141 实名认证(ID5); 142 学历认证; 143 手机认证; 144 视频认证; 145 信用认证

Changed:

| ID | Task | Start | Finish | Duration | Total float | Other |
| --- | --- | --- | --- | --- | --- | --- |
| 76 | **综合账户系统** |  | 2017-11-06 → 2018-02-01 (+87d) | 38.5d? → 101.5d |  | was named 账户/系统 |
| 77 | 需求分析 |  |  |  | 74d → 70.5d | resources 李林; 吴小刚 → 吴小刚 |
| 78 | 方案设计 |  |  |  | 67d → 63.5d | resources 李林; 吴小刚 → 吴小刚 |
| 79 | 数据模型 |  |  |  | 3.5d → 41.5d | resources 李林; 吴小刚 → 吴小刚 |
| 80 | **功能开发** | 2017-11-01 → 2017-12-25 (+54d) | 2017-11-01 → 2018-02-01 (+92d) | 1d? → 28.5d | none → 0d | resources 李林; 吴小刚 → 吴小刚 |
| 81 | **后台** | 2017-11-01 → 2017-12-25 (+54d) | 2017-11-06 → 2018-01-12 (+67d) | 3.5d? → 15d | -2.5d → 0d | resources 李林; 吴小刚 → 吴小刚 |
| 82 | 账户类型 | 2017-11-01 → 2017-12-25 (+54d) | 2017-11-06 → 2017-12-25 (+49d) | 3.5d? → 1d | -2.5d → none | was named 账户资金管理; resources 李林; 吴小刚 → 吴小刚 |
| 91 | 充值记录 | 2017-09-13 → 2018-01-10 (+119d) | 2017-09-13 → 2018-01-10 (+119d) | 1d? → 1d |  | resources none → 吴小刚 |
